# MacroWeldingAdminApp

Schedule from MS Project, 2019-04-30 to 2019-06-12, costs in $.

## Calendars

- Standard: Mon-Tue 10:30-12:30; Wed-Thu 08:30-12:30; Fri-Sun off.

## Resources

| Resource | Rate |
| --- | --- |
| Mike | 50 |
| Mathieu | 50 |
| Ben | 50 |

## Schedule

| ID | WBS | Task | Type | Duration | Start | Finish | Predecessors | Total slack | Free slack | Resources | Work | Cost |
| --- | --- | --- | --- | --- | --- | --- | --- | --- | --- | --- | --- | --- |
| 1 | 1 | **Create Admin Support Application** |  | 9.75d? | 2019-04-30 10:30 | 2019-06-12 15:00 |  | 0d |  |  | 50h | 2,500 |
| 2 | 1.1 | **Inception** |  | 2d | 2019-04-30 10:30 | 2019-05-08 10:30 |  | 0d |  |  | 26h | 1,300 |
| 3 | 1.1.1 | Preliminary meeting with project sponsor |  | 2h | 2019-04-30 10:30 | 2019-04-30 12:30 |  | 0d |  |  |  |  |
| 4 | 1.1.2 | Summary memo from preliminary meeting |  | 4h | 2019-05-01 08:30 | 2019-05-01 12:30 | 3 | 0d |  | Ben | 4h | 200 |
| 5 | 1.1.3 | Create phase plan |  | 2h | 2019-05-02 08:30 | 2019-05-02 10:30 | 3, 4 | 0d |  | Ben | 2h | 100 |
| 6 | 1.1.4 | Create detailed Inception iteration plan |  | 2h | 2019-05-02 10:30 | 2019-05-02 12:30 | 3, 4, 5 | 0d |  | Ben | 2h | 100 |
| 7 | 1.1.5 | Create Vision Document |  | 1h | 2019-05-06 10:30 | 2019-05-06 11:30 | 6 | 8.38d |  | Mathieu | 1h | 50 |
| 8 | 1.1.6 | Create Use Case Skeletons for 2 highest priority use cases |  | 1h | 2019-05-06 10:30 | 2019-05-06 11:30 | 6 | 0d |  | Mike | 1h | 50 |
| 9 | 1.1.7 | Initial Business Rules |  | 1h | 2019-05-06 11:30 | 2019-05-06 12:30 | 8 | 0d |  | Mike | 1h | 50 |
| 10 | 1.1.8 | Initial Glossary |  | 1h | 2019-05-06 11:30 | 2019-05-06 12:30 | 8 | 0d |  | Ben | 1h | 50 |
| 11 | 1.1.9 | Define non-functional specs |  | 1h | 2019-05-06 11:30 | 2019-05-06 12:30 | 8 | 0d |  | Mathieu | 1h | 50 |
| 12 | 1.1.10 | Get feedback from client on vision doc |  | 2h | 2019-05-07 10:30 | 2019-05-07 12:30 | 9, 10, 11 | 0d |  | Ben; Mathieu; Mike | 6h | 300 |
| 13 | 1.1.11 | Get feedback from client on Bus. Rules, glossary and non-functional specs |  | 2h | 2019-05-08 08:30 | 2019-05-08 10:30 | 9, 10, 11, 12 | 7.75d | 0d | Ben; Mathieu; Mike | 6h | 300 |
| 14 | 1.1.12 | Create detailed E1 iteration plan |  | 1h | 2019-05-08 08:30 | 2019-05-08 09:30 | 12 | 0d |  | Ben | 1h | 50 |
| 15 | 1.1.13 | Inception complete | milestone | 0d | 2019-05-08 10:30 | 2019-05-08 10:30 | 13 | 7.75d |  |  |  |  |
| 16 | 1.2 | **Elaboration** |  | 6.88d? | 2019-05-08 09:30 | 2019-06-07 17:00 | 14 | 0d |  |  | 24h | 1,200 |
| 17 | 1.2.1 | **Elaboration Iteration 1** |  | 5.94d? | 2019-05-08 09:30 | 2019-05-30 17:00 |  |  |  |  |  |  |
| 18 | 1.2.1.1 | Create detailed use cases for E1 | manual | 2h | 2019-05-09 08:00 | 2019-05-09 10:00 |  |  |  |  |  |  |
| 19 | 1.2.1.2 | Update Business rules | manual | 1h | 2019-05-10 08:00 | 2019-05-10 09:00 |  |  |  |  |  |  |
| 20 | 1.2.1.3 | UML diagrams | manual | 2h | 2019-05-10 08:00 | 2019-05-10 10:00 |  |  |  |  |  |  |
| 21 | 1.2.1.4 | N-tier diagrams | manual | 1h | 2019-05-10 08:00 | 2019-05-10 09:00 |  |  |  |  |  |  |
| 22 | 1.2.1.5 | Class diagrams | manual | 1.62d | 2019-05-24 08:00 | 2019-05-28 17:00 |  |  |  |  |  |  |
| 23 | 1.2.1.6 | Update Vision Document | manual | 1h | 2019-05-13 08:00 | 2019-05-13 09:00 |  |  |  |  |  |  |
| 24 | 1.2.1.7 | Update Glossary | manual | 15min | 2019-05-13 08:00 | 2019-05-13 08:15 |  |  |  |  |  |  |
| 25 | 1.2.1.8 | Create first ERD | manual | 2h | 2019-05-27 08:00 | 2019-05-27 10:00 |  |  |  |  |  |  |
| 26 | 1.2.1.9 | E1 front ends coded | manual | 2h | 2019-05-28 08:00 | 2019-05-28 10:00 |  |  |  |  |  |  |
| 27 | 1.2.1.10 | E1 Client walkthrough | manual | 1h | 2019-05-30 08:00 | 2019-05-30 09:00 |  |  |  |  |  |  |
| 28 | 1.2.1.11 | Document client correspondence for E1 | manual | 1d? | 2019-05-30 08:00 | 2019-06-04 12:00 |  |  |  |  |  |  |
| 29 | 1.2.1.12 | Project fixes based on E1 client feedback | manual | 1d? | 2019-05-30 08:00 | 2019-06-04 12:00 |  |  |  |  |  |  |
| 30 | 1.2.1.13 | Create detailed E2 iteration plan | manual | 1d? | 2019-05-30 08:00 | 2019-06-04 12:00 |  |  |  |  |  |  |
| 31 | 1.2.1.14 | E1 complete | milestone, manual | 0d | 2019-05-30 08:00 | 2019-05-30 08:00 |  |  |  |  |  |  |

| ID | WBS | Task | Type | Duration | Start | Finish | Predecessors | Resources | Work | Cost |
| --- | --- | --- | --- | --- | --- | --- | --- | --- | --- | --- |
| 32 | 1.2.2 | **Elaboration Iteration 2** |  | 2.62d | 2019-06-03 08:00 | 2019-06-07 17:00 | 31 |  | 24h | 1,200 |
| 33 | 1.2.2.1 | Create detailed use cases for E2 | manual | 1h | 2019-06-03 08:00 | 2019-06-03 09:00 |  | Ben; Mike | 2h | 100 |
| 34 | 1.2.2.2 | Update Business rules, Vision Document, and Glossary for E2 | manual | 1h | 2019-06-03 08:00 | 2019-06-03 09:00 |  | Ben; Mathieu | 2h | 100 |
| 35 | 1.2.2.3 | UML diagrams update for E2 | manual | 1h | 2019-06-03 10:30 | 2019-06-03 11:30 | 33, 34 | Mike; Mathieu | 2h | 100 |
| 36 | 1.2.2.4 | Update ERD | manual | 1h | 2019-06-03 11:30 | 2019-06-03 12:30 | 35 | Mike | 1h | 50 |
| 37 | 1.2.2.5 | E2 front ends coded | manual | 1h | 2019-06-04 10:30 | 2019-06-04 11:30 | 36 | Ben; Mathieu; Mike | 3h | 150 |
| 38 | 1.2.2.6 | E2 client walkthrough | manual | 1h | 2019-06-04 11:30 | 2019-06-04 12:30 | 37 | Ben; Mathieu; Mike | 3h | 150 |
| 39 | 1.2.2.7 | Document client correspondence for E2 | manual | 1d | 2019-06-05 08:00 | 2019-06-06 12:00 |  | Ben | 8h | 400 |
| 40 | 1.2.2.8 | Project fixes based on E2 client feedback | manual | 1h | 2019-06-05 08:30 | 2019-06-05 09:30 | 38 | Ben; Mathieu; Mike | 3h | 150 |
| 41 | 1.2.2.9 | E2 complete | milestone, manual | 0d | 2019-06-07 08:00 | 2019-06-07 08:00 | 40 |  |  |  |
| 42 | 1.3 | **Transition** |  | 1.62d? | 2019-06-10 08:00 | 2019-06-12 15:00 |  |  |  |  |
| 43 | 1.3.1 | Final Document submission | manual | 1d? | 2019-06-10 08:00 | 2019-06-12 10:00 |  |  |  |  |
| 44 | 1.3.2 | Transition complete | milestone, manual | 0d | 2019-06-12 08:00 | 2019-06-12 08:00 |  |  |  |  |
